# Riverside Clinic Fit-out

Schedule from Primavera P6, 2026-02-02 to 2026-11-06, data date 2026-08-31, A marks actual dates.

## Schedule

| ID | WBS | Activity | Type | Duration | Start | Finish | Predecessors | Complete | Remaining | Total float |
| --- | --- | --- | --- | --- | --- | --- | --- | --- | --- | --- |
|  | CLOSE | **Closeout** |  |  | 2026-10-12 | 2026-11-06 |  |  |  |  |
| A1130 |  | Test and balance |  | 10d | 2026-10-12 | 2026-10-23 | A1110 |  |  | 0d |
| A1140 |  | Punch list |  | 10d | 2026-10-26 | 2026-11-06 | A1100, A1120, A1130 SS+2d |  |  | 0d |
| A1150 |  | Substantial completion | milestone | 0d | 2026-11-06 | 2026-11-06 | A1140 FF |  |  | 0d |
|  | L1 | **Level 1 fit-out** |  |  | 2026-02-23 | 2026-10-14 |  |  |  |  |
| A1020 |  | Overhead MEP rough-in |  | 30d | 2026-02-23 A | 2026-04-03 A | A1010 SS+5d | 100% |  |  |
| A1030 |  | Wall framing |  | 25d | 2026-03-09 A | 2026-04-10 A | A1010 | 100% |  |  |
| A1040 |  | In-wall MEP rough-in |  | 20d | 2026-04-13 A | 2026-05-08 A | A1030 SS+10d, A1020 | 100% |  |  |
| A1050 |  | In-wall inspections |  | 5d | 2026-05-11 A | 2026-05-15 A | A1040 | 100% |  |  |
| A1060 |  | Hang and finish board |  | 30d | 2026-05-18 A | 2026-06-26 | A1050 | 80% | 6d | 0d |
| A1070 |  | Ceiling grid |  | 20d | 2026-06-22 A | 2026-07-17 | A1060 SS+15d | 60% | 8d | 0d |
| A1080 |  | Prime and first coat paint |  | 15d | 2026-07-20 A | 2026-08-07 | A1070 SS+10d, A1060 FF+2d | 30% | 10.5d | 0d |
| A1090 |  | Casework and millwork |  | 20d | 2026-08-17 A | 2026-09-11 | A1080 SS+5d | 10% | 18d | 0d |
| A1100 |  | Resilient flooring |  | 15d | 2026-09-14 | 2026-10-02 | A1080 |  |  | 0d |
| A1110 |  | MEP trim and devices |  | 20d | 2026-09-14 | 2026-10-09 | A1070 |  |  | 0d |
| A1120 |  | Door hardware |  | 8d | 2026-10-05 | 2026-10-14 | A1090 SS+3d |  |  | 0d |
|  | PRE | **Preconstruction and demolition** |  |  | 2026-02-02 | 2026-02-20 |  |  |  |  |
| A1000 |  | Notice to proceed | milestone | 0d | 2026-02-02 A | 2026-02-02 A |  | 100% |  |  |
| A1010 |  | Selective demolition |  | 15d | 2026-02-02 A | 2026-02-20 A | A1000 | 100% |  |  |
